# TrabalhoFinal

Schedule from ProjectLibre, 2024-11-04 to 2024-11-28.

## Calendars

- Padrão: Mon-Fri 08:00-12:00, 13:00-17:00; Sat-Sun off.

## Resources

| Resource |
| --- |
| Não atribuído |
| Luis Riso |
| Victória |
| Julia |
| Yasmi |
| Gabriel |

## Schedule

| ID | WBS | Task | Duration | Start | Finish | Predecessors | Complete | Baseline start | Baseline finish | Constraint | Resources |
| --- | --- | --- | --- | --- | --- | --- | --- | --- | --- | --- | --- |
| 1 | 1 | **PROJETO TASKLY** | 18.98d | 2024-11-04 08:00 | 2024-11-28 16:48 |  | 98% | 2024-11-04 07:00 | 2024-11-28 16:48 |  |  |
| 2 | 1.1 | **Release 00** | 4d | 2024-11-04 08:00 | 2024-11-07 17:00 |  | 100% | 2024-11-04 07:00 | 2024-11-07 17:00 |  |  |
| 3 | 1.1.1 | Criar Dúvidas Elicitação Requisitos | 0.12d | 2024-11-04 08:00 | 2024-11-04 09:00 |  | 100% | 2024-11-04 07:00 | 2024-11-04 09:00 | start no earlier than 2024-11-04 07:00 | Luis Riso; Yasmi; Gabriel |
| 4 | 1.1.2 | DRE | 0.5d | 2024-11-04 09:00 | 2024-11-04 14:00 | 3 | 100% | 2024-11-04 09:00 | 2024-11-04 14:00 |  | Gabriel; Julia; Luis Riso; Victória; Yasmi |
| 5 | 1.1.3 | Telas | 0.12d | 2024-11-04 14:00 | 2024-11-04 15:00 | 4 | 100% | 2024-11-04 14:00 | 2024-11-04 15:00 |  | Julia; Victória |
| 6 | 1.1.4 | Matriz Rastreabilidade | 0.25d | 2024-11-04 15:00 | 2024-11-04 17:00 | 4 | 100% | 2024-11-04 15:00 | 2024-11-04 17:00 | start no earlier than 2024-11-04 15:00 | Luis Riso; Yasmi |
| 7 | 1.1.5 | Cronograma Projeto | 0.5d | 2024-11-05 08:00 | 2024-11-05 13:00 | 4 | 100% | 2024-11-05 08:00 | 2024-11-05 13:00 | start no earlier than 2024-11-05 08:00 | Luis Riso |
| 8 | 1.1.6 | Entrega Release 00 | 0.12d | 2024-11-07 16:00 | 2024-11-07 17:00 |  | 100% | 2024-11-07 16:00 | 2024-11-07 17:00 | start no earlier than 2024-11-07 16:00 | Gabriel; Julia; Luis Riso; Victória; Yasmi |
| 9 | 1.2 | **Release 01** | 4d | 2024-11-11 08:00 | 2024-11-14 17:00 |  | 100% | 2024-11-11 08:00 | 2024-11-14 17:00 |  |  |
| 10 | 1.2.1 | **[RFC04] Manter Projeto** | 1d | 2024-11-11 08:00 | 2024-11-11 17:00 |  | 100% | 2024-11-11 08:00 | 2024-11-11 17:00 |  |  |
| 11 | 1.2.1.1 | [RFS13] Inserir Projeto | 0.12d | 2024-11-11 08:00 | 2024-11-11 09:00 | 8 | 100% | 2024-11-11 08:00 | 2024-11-11 09:00 | start no earlier than 2024-11-11 08:00 | Julia; Luis Riso; Yasmi |
| 12 | 1.2.1.2 | [RFS14] Consultar Projeto | 0.12d | 2024-11-11 09:00 | 2024-11-11 10:00 | 8 | 100% | 2024-11-11 09:00 | 2024-11-11 10:00 | start no earlier than 2024-11-11 09:00 | Julia; Luis Riso; Yasmi |
| 13 | 1.2.1.3 | [RFS15] Alterar Projeto | 0.12d | 2024-11-11 10:00 | 2024-11-11 11:00 | 8 | 100% | 2024-11-11 10:00 | 2024-11-11 11:00 | start no earlier than 2024-11-11 10:00 | Julia; Luis Riso; Yasmi |
| 14 | 1.2.1.4 | [RFS16] Remover Projeto | 0.12d | 2024-11-11 11:00 | 2024-11-11 13:00 | 8 | 100% | 2024-11-11 11:00 | 2024-11-11 13:00 | start no earlier than 2024-11-11 11:00 | Julia; Luis Riso; Yasmi |
| 15 | 1.2.1.5 | Teste [RFC04] | 0.25d | 2024-11-11 12:00 | 2024-11-11 15:00 |  | 100% | 2024-11-11 13:00 | 2024-11-11 15:00 | start no earlier than 2024-11-11 13:00 | Gabriel; Victória |
| 16 | 1.2.1.6 | Ajuste [RFC04] | 0.25d | 2024-11-11 15:00 | 2024-11-11 17:00 | 15 | 100% | 2024-11-11 15:00 | 2024-11-11 17:00 |  | Gabriel; Victória |
| 17 | 1.2.2 | **[RFC02] Manter Tarefa** | 1d | 2024-11-12 08:00 | 2024-11-12 17:00 |  | 100% | 2024-11-12 08:00 | 2024-11-12 17:00 |  |  |
| 18 | 1.2.2.1 | [RFS05] Inserir Tarefa | 0.12d | 2024-11-12 08:00 | 2024-11-12 09:00 | 16 | 100% | 2024-11-12 08:00 | 2024-11-12 09:00 | start no earlier than 2024-11-12 08:00 | Julia; Luis Riso; Yasmi |
| 19 | 1.2.2.2 | [RFS06] Consultar Tarefa | 0.12d | 2024-11-12 09:00 | 2024-11-12 10:00 | 16 | 100% | 2024-11-12 09:00 | 2024-11-12 10:00 | start no earlier than 2024-11-12 09:00 | Julia; Luis Riso; Yasmi |
| 20 | 1.2.2.3 | [RFS07] Alterar Tarefa | 0.12d | 2024-11-12 10:00 | 2024-11-12 11:00 | 16 | 100% | 2024-11-12 10:00 | 2024-11-12 11:00 | start no earlier than 2024-11-12 10:00 | Julia; Luis Riso; Yasmi |
| 21 | 1.2.2.4 | [RSF08] Remover Tarefa | 0.12d | 2024-11-12 11:00 | 2024-11-12 13:00 | 16 | 100% | 2024-11-12 11:00 | 2024-11-12 13:00 | start no earlier than 2024-11-12 11:00 | Julia; Luis Riso; Yasmi |
| 22 | 1.2.2.5 | Teste [RFC02] | 0.25d | 2024-11-12 12:00 | 2024-11-12 15:00 | 21 | 100% | 2024-11-12 13:00 | 2024-11-12 15:00 |  | Gabriel; Victória |
| 23 | 1.2.2.6 | Ajuste [RFC02] | 0.25d | 2024-11-12 15:00 | 2024-11-12 17:00 | 22 | 100% | 2024-11-12 15:00 | 2024-11-12 17:00 |  | Gabriel; Victória |
| 24 | 1.2.3 | Entrega Release 01 | 0.12d | 2024-11-14 16:00 | 2024-11-14 17:00 |  | 100% | 2024-11-14 16:00 | 2024-11-14 17:00 | start no earlier than 2024-11-14 16:00 | Gabriel; Julia; Luis Riso; Victória; Yasmi |

| ID | WBS | Task | Duration | Start | Finish | Predecessors | Complete | Baseline start | Baseline finish | Constraint | Resources |
| --- | --- | --- | --- | --- | --- | --- | --- | --- | --- | --- | --- |
| 25 | 1.3 | **Release 02** | 4d | 2024-11-18 08:00 | 2024-11-21 17:00 |  | 100% | 2024-11-18 08:00 | 2024-11-21 17:00 |  |  |
| 26 | 1.3.1 | **[RFC03] Manter Subtarefa** | 1d | 2024-11-18 08:00 | 2024-11-18 17:00 |  | 100% | 2024-11-18 08:00 | 2024-11-18 17:00 |  |  |
| 27 | 1.3.1.1 | [RFS09] Inserir Subtarefa | 0.12d | 2024-11-18 08:00 | 2024-11-18 09:00 | 24 | 100% | 2024-11-18 08:00 | 2024-11-18 09:00 | start no earlier than 2024-11-18 08:00 | Julia; Luis Riso; Yasmi |
| 28 | 1.3.1.2 | [RFS10] Consultar Subtarefa | 0.88d | 2024-11-18 09:00 | 2024-11-18 17:00 | 24 | 100% | 2024-11-18 09:00 | 2024-11-18 17:00 | start no earlier than 2024-11-18 09:00 | Julia; Luis Riso; Yasmi |
| 29 | 1.3.1.3 | [RFS11] Alterar Subtarefa | 0.12d | 2024-11-18 10:00 | 2024-11-18 11:00 | 24 | 100% | 2024-11-18 10:00 | 2024-11-18 11:00 | start no earlier than 2024-11-18 10:00 | Julia; Luis Riso; Yasmi |
| 30 | 1.3.1.4 | [RFS12] Remover Subtarefa | 0.12d | 2024-11-18 11:00 | 2024-11-18 13:00 | 24 | 100% | 2024-11-18 11:00 | 2024-11-18 13:00 | start no earlier than 2024-11-18 11:00 | Julia; Luis Riso; Yasmi |
| 31 | 1.3.1.5 | Teste [RFC03] | 0.25d | 2024-11-18 12:00 | 2024-11-18 15:00 | 30 | 100% | 2024-11-18 13:00 | 2024-11-18 15:00 |  | Gabriel; Victória |
| 32 | 1.3.1.6 | Ajuste [RFC03] | 0.25d | 2024-11-18 15:00 | 2024-11-18 17:00 | 31 | 100% | 2024-11-18 15:00 | 2024-11-18 17:00 |  | Gabriel; Victória |
| 33 | 1.3.2 | **[RFC06] Manter Status** | 1d | 2024-11-19 08:00 | 2024-11-19 17:00 |  | 100% | 2024-11-19 08:00 | 2024-11-19 17:00 |  |  |
| 34 | 1.3.2.1 | [RFS21] Inserir Status | 0.12d | 2024-11-19 08:00 | 2024-11-19 09:00 | 32 | 100% | 2024-11-19 08:00 | 2024-11-19 09:00 | start no earlier than 2024-11-18 08:00 | Julia; Luis Riso; Yasmi |
| 35 | 1.3.2.2 | [RFS22] Consultar Status | 0.12d | 2024-11-19 09:00 | 2024-11-19 10:00 | 32 | 100% | 2024-11-19 09:00 | 2024-11-19 10:00 | start no earlier than 2024-11-19 09:00 | Julia; Luis Riso; Yasmi |
| 36 | 1.3.2.3 | [RFS23] Alterar Status | 0.12d | 2024-11-19 10:00 | 2024-11-19 11:00 | 32 | 100% | 2024-11-19 10:00 | 2024-11-19 11:00 | start no earlier than 2024-11-19 10:00 | Julia; Luis Riso; Yasmi |
| 37 | 1.3.2.4 | [RFS24] Remover Status | 0.12d | 2024-11-19 11:00 | 2024-11-19 13:00 | 32 | 100% | 2024-11-19 11:00 | 2024-11-19 13:00 | start no earlier than 2024-11-19 11:00 | Julia; Luis Riso; Yasmi |
| 38 | 1.3.2.5 | Teste [RFC06] | 0.25d | 2024-11-19 12:00 | 2024-11-19 15:00 | 37 | 100% | 2024-11-19 13:00 | 2024-11-19 15:00 | start no earlier than 2024-11-18 13:00 | Gabriel; Victória |
| 39 | 1.3.2.6 | Ajuste [RFC06] | 0.25d | 2024-11-19 15:00 | 2024-11-19 17:00 | 38 | 100% | 2024-11-19 15:00 | 2024-11-19 17:00 |  | Gabriel; Victória |
| 40 | 1.3.3 | **[RFC09] Relatório Progresso Tarefa** | 1d | 2024-11-20 08:00 | 2024-11-20 17:00 |  | 100% | 2024-11-20 08:00 | 2024-11-20 17:00 |  |  |
| 41 | 1.3.3.1 | [RFS25] Implementar Relatório | 0.5d | 2024-11-20 08:00 | 2024-11-20 13:00 | 39 | 100% | 2024-11-20 08:00 | 2024-11-20 13:00 | start no earlier than 2024-11-19 09:00 | Julia; Luis Riso; Yasmi |
| 42 | 1.3.3.2 | Teste [RFC09] | 0.25d | 2024-11-20 12:00 | 2024-11-20 15:00 | 41 | 100% | 2024-11-20 13:00 | 2024-11-20 15:00 | start no earlier than 2024-11-20 13:00 | Gabriel; Victória |
| 43 | 1.3.3.3 | Ajuste [RFC09] | 0.25d | 2024-11-20 15:00 | 2024-11-20 17:00 | 42 | 100% | 2024-11-20 15:00 | 2024-11-20 17:00 |  | Gabriel; Victória |
| 44 | 1.3.4 | Entrega Release 02 | 0.12d | 2024-11-21 16:00 | 2024-11-21 17:00 |  | 100% | 2024-11-21 16:00 | 2024-11-21 17:00 | start no earlier than 2024-11-21 16:00 | Gabriel; Julia; Luis Riso; Victória; Yasmi |
| 45 | 1.4 | **Release 03** | 3.98d | 2024-11-25 08:00 | 2024-11-28 16:48 |  | 94% | 2024-11-25 08:00 | 2024-11-28 16:48 |  |  |
| 46 | 1.4.1 | **[RFC01] Manter Usuário** | 1d | 2024-11-25 08:00 | 2024-11-25 17:00 |  | 100% | 2024-11-25 08:00 | 2024-11-25 17:00 |  |  |
| 47 | 1.4.1.1 | [RFS01] Inserir Usuário | 0.12d | 2024-11-25 08:00 | 2024-11-25 09:00 | 44 | 100% | 2024-11-25 08:00 | 2024-11-25 09:00 | start no earlier than 2024-11-25 08:00 | Julia; Luis Riso; Yasmi |
| 48 | 1.4.1.2 | [RFS02] Consultar Usuário | 0.12d | 2024-11-25 09:00 | 2024-11-25 10:00 | 44 | 100% | 2024-11-25 09:00 | 2024-11-25 10:00 | start no earlier than 2024-11-25 09:00 | Julia; Luis Riso; Yasmi |
| 49 | 1.4.1.3 | [RFS03] Alterar Usuário | 0.12d | 2024-11-25 10:00 | 2024-11-25 11:00 | 44 | 100% | 2024-11-25 10:00 | 2024-11-25 11:00 | start no earlier than 2024-11-25 10:00 | Julia; Luis Riso; Yasmi |
| 50 | 1.4.1.4 | [RFS04] Remover Usuário | 0.12d | 2024-11-25 11:00 | 2024-11-25 13:00 | 44 | 100% | 2024-11-25 11:00 | 2024-11-25 13:00 | start no earlier than 2024-11-25 11:00 | Julia; Luis Riso; Yasmi |
| 51 | 1.4.1.5 | Teste [RFC01] | 0.25d | 2024-11-25 12:00 | 2024-11-25 15:00 | 50 | 100% | 2024-11-25 13:00 | 2024-11-25 15:00 |  | Gabriel; Victória |
| 52 | 1.4.1.6 | Ajuste [RFC01] | 0.25d | 2024-11-25 15:00 | 2024-11-25 17:00 | 51 | 100% | 2024-11-25 15:00 | 2024-11-25 17:00 |  | Gabriel; Victória |

| ID | WBS | Task | Duration | Start | Finish | Predecessors | Complete | Baseline start | Baseline finish | Constraint | Resources |
| --- | --- | --- | --- | --- | --- | --- | --- | --- | --- | --- | --- |
| 53 | 1.4.2 | **[RFC05] Manter Cliente** | 1d | 2024-11-26 08:00 | 2024-11-26 17:00 |  | 100% | 2024-11-26 08:00 | 2024-11-26 17:00 |  |  |
| 54 | 1.4.2.1 | [RFS17] Inserir Cliente | 0.12d | 2024-11-26 08:00 | 2024-11-26 09:00 | 52 | 100% | 2024-11-26 08:00 | 2024-11-26 09:00 |  | Julia; Luis Riso; Yasmi |
| 55 | 1.4.2.2 | [RFS18] Consultar Cliente | 0.12d | 2024-11-26 09:00 | 2024-11-26 10:00 | 52 | 100% | 2024-11-26 09:00 | 2024-11-26 10:00 | start no earlier than 2024-11-26 09:00 | Julia; Luis Riso; Yasmi |
| 56 | 1.4.2.3 | [RFS19] Alterar Cliente | 0.12d | 2024-11-26 10:00 | 2024-11-26 11:00 | 52 | 100% | 2024-11-26 10:00 | 2024-11-26 11:00 | start no earlier than 2024-11-26 10:00 | Julia; Luis Riso; Yasmi |
| 57 | 1.4.2.4 | [RFS20] Remover Cliente | 0.12d | 2024-11-26 11:00 | 2024-11-26 13:00 | 52 | 100% | 2024-11-26 11:00 | 2024-11-26 13:00 | start no earlier than 2024-11-26 11:00 | Julia; Luis Riso; Yasmi |
| 58 | 1.4.2.5 | Teste [RFC05] | 0.25d | 2024-11-26 12:00 | 2024-11-26 15:00 | 57 | 100% | 2024-11-26 13:00 | 2024-11-26 15:00 |  | Gabriel; Victória |
| 59 | 1.4.2.6 | Ajuste [RFC05] | 0.25d | 2024-11-26 15:00 | 2024-11-26 17:00 | 58 | 100% | 2024-11-26 15:00 | 2024-11-26 17:00 |  | Gabriel; Victória |
| 60 | 1.4.3 | **[RFC10] Relatório Carga de Trabalho** | 1d | 2024-11-27 08:00 | 2024-11-27 17:00 |  | 100% | 2024-11-27 08:00 | 2024-11-27 17:00 |  |  |
| 61 | 1.4.3.1 | [RFS26] Implementar Relatório | 0.5d | 2024-11-27 08:00 | 2024-11-27 13:00 | 59 | 100% | 2024-11-27 08:00 | 2024-11-27 13:00 |  | Julia; Luis Riso; Yasmi |
| 62 | 1.4.3.2 | Teste [RFC10] | 0.25d | 2024-11-27 12:00 | 2024-11-27 15:00 | 61 | 100% | 2024-11-27 13:00 | 2024-11-27 15:00 | start no earlier than 2024-11-27 13:00 | Gabriel; Victória |
| 63 | 1.4.3.3 | Ajuste [RFC10] | 0.25d | 2024-11-27 15:00 | 2024-11-27 17:00 | 62 | 100% | 2024-11-27 15:00 | 2024-11-27 17:00 |  | Gabriel; Victória |
| 64 | 1.4.4 | Entrega Release 03 | 0.1d | 2024-11-28 16:00 | 2024-11-28 16:48 |  |  | 2024-11-28 16:00 | 2024-11-28 16:48 | start no earlier than 2024-11-28 16:00 | Gabriel; Julia; Luis Riso; Victória; Yasmi |
